# 点爆系统软件开发

Schedule from a web Gantt chart, 2024-06-28 to 2024-08-30.
Sundays are off

## Schedule

| ID | WBS | Task | Type | Duration | Start | Finish |
| --- | --- | --- | --- | --- | --- | --- |
| 2 | 1 | UI设计稿和客户开会确认 |  | 27d | 2024-07-01 | 2024-07-31 |
| 3 | 2 | **上位机基础功能开发** |  | 24d | 2024-06-28 | 2024-07-25 |
| 4 | 2.1 | 前台框架搭建 | fixed start | 1d | 2024-06-28 | 2024-06-28 |
| 5 | 2.2 | 前台界面实现 |  | 5d | 2024-06-29 | 2024-07-04 |
| 6 | 2.3 | **总览模块开发** |  | 8d | 2024-07-04 | 2024-07-12 |
| 7 | 2.3.1 | 点爆模块（点爆模式选择、配方选择、预览配方、取消预览配方、下发配方） |  | 1d | 2024-07-04 | 2024-07-04 |
| 8 | 2.3.2 | **牵引平台** |  | 2d | 2024-07-05 | 2024-07-06 |
| 9 | 2.3.2.1 | 点动 |  | 1d | 2024-07-05 | 2024-07-05 |
| 10 | 2.3.2.2 | 自动 |  | 1d | 2024-07-06 | 2024-07-06 |
| 11 | 2.3.2.3 | 配置暂存 |  | 1d | 2024-07-06 | 2024-07-06 |
| 12 | 2.3.3 | **相机支架** |  | 2d | 2024-07-08 | 2024-07-09 |
| 13 | 2.3.3.1 | 手动调整支架运动、手动调整云台运动、手动调整光圈与调焦 |  | 1d | 2024-07-08 | 2024-07-08 |
| 14 | 2.3.3.2 | 设置初始位置、配方暂存、相机支架回原点、载入位置、当前位置另存为 |  | 1d | 2024-07-09 | 2024-07-09 |
| 15 | 2.3.4 | **灯光模块** |  | 2d | 2024-07-10 | 2024-07-11 |
| 16 | 2.3.4.1 | 区域选择、组选择、开关控制、亮度控制、配方暂存 |  | 1d | 2024-07-10 | 2024-07-10 |
| 17 | 2.3.4.2 | 配方另存为、载入灯配置 |  | 1d | 2024-07-11 | 2024-07-11 |
| 18 | 2.4 | **A箱** |  | 4d | 2024-07-12 | 2024-07-16 |
| 19 | 2.4.1 | 信息展示 |  | 1d | 2024-07-12 | 2024-07-12 |
| 20 | 2.4.2 | **设置页面** |  | 2d | 2024-07-13 | 2024-07-15 |
| 21 | 2.4.2.1 | 模式选择、开关门、预约开机、 |  | 1d | 2024-07-13 | 2024-07-13 |
| 22 | 2.4.2.2 | 程式设定 |  | 1d | 2024-07-15 | 2024-07-15 |
| 23 | 2.4.3 | 曲线展示 |  | 1d | 2024-07-16 | 2024-07-16 |
| 24 | 2.5 | B箱 |  | 1d | 2024-07-17 | 2024-07-17 |
| 25 | 2.6 | 报警记录 |  | 1d | 2024-07-18 | 2024-07-18 |
| 26 | 2.7 | 配方管理 |  | 1d | 2024-07-18 | 2024-07-18 |

| ID | WBS | Task | Type | Duration | Start | Finish | Predecessors | Status |
| --- | --- | --- | --- | --- | --- | --- | --- | --- |
| 27 | 2.8 | **设置** |  | 4d | 2024-07-19 | 2024-07-23 |  |  |
| 28 | 2.8.1 | 系统设置 |  | 1d | 2024-07-19 | 2024-07-19 |  |  |
| 29 | 2.8.2 | 用户权限 |  | 1d | 2024-07-20 | 2024-07-20 |  |  |
| 30 | 2.8.3 | 功率统计 |  | 1d | 2024-07-22 | 2024-07-22 |  |  |
| 31 | 2.8.4 | service服务 |  | 1d | 2024-07-23 | 2024-07-23 |  |  |
| 32 | 2.9 | 登录 |  | 1d | 2024-07-24 | 2024-07-24 |  |  |
| 33 | 2.10 | 控制权限 | fixed end | 1d | 2024-07-25 | 2024-07-25 |  |  |
| 34 | 3 | 6个子系统协议对接 | fixed start | 7d | 2024-07-29 | 2024-08-05 |  |  |
| 35 | 4 | 子系统公司内部调试测试 |  | 4d | 2024-08-06 | 2024-08-09 | 34 | waiting |
| 36 | 5 | 客户现场硬件调试和软件测试 |  | 18d | 2024-08-10 | 2024-08-30 | 35 | waiting |
